# Shepway Asymchem Programme_30.08.24_r1_Baseline and Update 05.11.24

Schedule from MS Project, 2026-09-01 to 2027-09-17.

## Calendars

- Standard: Mon-Fri 08:00-12:00, 13:00-17:00; Sat-Sun off. Exceptions (off unless hours are given): 2026-12-24 to 2027-01-01 (Christmas Shut Down), 2027-03-26 (Good Friday), 2027-03-29 (Easter Monday), 2027-05-03 (Bank Holiday), 2027-05-31 (Bank Holiday), 2027-08-30 (Bank Holiday).

## Schedule

| ID | WBS | Task | Type | Duration | Start | Finish | Predecessors | Total slack | Free slack |
| --- | --- | --- | --- | --- | --- | --- | --- | --- | --- |
| 1 | 1 | **G128 Alterations** |  | 262d | 2026-09-01 | 2027-09-17 |  | 0d |  |
| 2 | 1.1 | Asymchem Funding Approval & Decision to Proceed | milestone | 0d | 2026-09-01 | 2026-09-01 |  | 5d | 0d |
| 3 | 1.2 | Appoint Consulant Team |  | 5d | 2026-09-01 | 2026-09-07 | 2 | 5d |  |
| 4 | 1.3 | Draft Basis of Design (BoD) |  | 10d | 2026-09-01 | 2026-09-14 |  | 0d |  |
| 5 | 1.4 | **Engage with and Appoint Principal Contractor** |  | 25d | 2026-09-15 | 2026-10-19 |  | 0d |  |
| 6 | 1.4.1 | Draft Contract |  | 15d | 2026-09-15 | 2026-10-05 | 3, 4 | 0d |  |
| 7 | 1.4.2 | Enquiry / ITT |  | 20d | 2026-09-15 | 2026-10-12 | 6SS | 0d |  |
| 8 | 1.4.3 | Negotiate Contractor's Fee % |  | 5d | 2026-10-13 | 2026-10-19 | 6, 7 | 0d |  |
| 9 | 1.5 | **Contract Award** |  | 20d | 2026-10-19 | 2026-11-16 |  | 0d |  |
| 10 | 1.5.1 | Contract Award | milestone | 0d | 2026-10-19 | 2026-10-19 | 8 | 0d |  |
| 11 | 1.5.2 | Mobilise & Contract |  | 20d | 2026-10-20 | 2026-11-16 | 10 | 0d |  |
| 12 | 1.6 | **Design Stage** |  | 35d | 2026-11-17 | 2027-01-13 |  | 0d |  |
| 13 | 1.6.1 | Specify & Organise Initial Site Surveys & Investigations |  | 15d | 2026-11-17 | 2026-12-07 | 11 | 0d |  |
| 14 | 1.6.2 | Initial Site Surveys & Investigations - mobilise, execute & report |  | 25d | 2026-12-01 | 2027-01-13 | 13SS+10d | 0d |  |
| 15 | 1.6.3 | Prepare initial Project Control, documents & PEP |  | 20d | 2026-11-17 | 2026-12-14 | 11 | 187d |  |
| 16 | 1.7 | **Lab Design** |  | 70d | 2026-11-17 | 2027-03-03 |  | 0d |  |
| 17 | 1.7.1 | User mtg, RFI & BoD confirmation |  | 10d | 2026-11-17 | 2026-11-30 | 11 | 0d |  |
| 18 | 1.7.2 | Concept & Co-ordinated Design |  | 30d | 2026-11-24 | 2027-01-13 | 17SS+5d | 0d |  |
| 19 | 1.7.3 | Equipment Specification & Schedules |  | 20d | 2026-12-08 | 2027-01-13 | 18SS+10d | 20d | 0d |
| 20 | 1.7.4 | Detailed Design |  | 25d | 2027-01-14 | 2027-02-17 | 14, 18 | 0d |  |
| 21 | 1.7.5 | Cost Estimate +/-10% |  | 10d | 2027-02-18 | 2027-03-03 | 20 | 25d | 0d |
| 22 | 1.7.6 | Building Control |  | 10d | 2027-02-18 | 2027-03-03 | 20 | 25d | 0d |
| 23 | 1.8 | **CDM** |  | 187d | 2026-11-17 | 2027-08-19 |  | 20d |  |
| 24 | 1.8.1 | Review / Prepare PCI |  | 30d | 2026-11-17 | 2027-01-06 | 13SS | 30d |  |
| 25 | 1.8.2 | Submit F10 |  | 1d | 2027-03-04 | 2027-03-04 | 54FS-5d | 29d |  |
| 26 | 1.8.3 | Prepare Construction Phase Plan |  | 10d | 2027-03-11 | 2027-03-24 | 24, 51FF | 15d |  |
| 27 | 1.8.4 | Prepare H&S File / O&M |  | 120d | 2027-03-01 | 2027-08-19 | 65FF | 20d |  |

| ID | WBS | Task | Type | Duration | Start | Finish | Predecessors | Total slack | Free slack |
| --- | --- | --- | --- | --- | --- | --- | --- | --- | --- |
| 28 | 1.9 | **Procurement** |  | 120d | 2026-12-01 | 2027-06-02 |  | 25d |  |
| 29 | 1.9.1 | **Isolators** |  | 120d | 2026-12-01 | 2027-06-02 |  | 20d |  |
| 30 | 1.9.1.1 | Vendor Shortlisting & T&C's |  | 20d | 2026-12-01 | 2027-01-06 | 17 | 25d | 5d |
| 31 | 1.9.1.2 | Tender & Approval to Proceed |  | 20d | 2027-01-14 | 2027-02-10 | 19, 30 | 20d | 0d |
| 32 | 1.9.1.3 | Order Placed |  | 5d | 2027-02-11 | 2027-02-17 | 31 | 20d | 0d |
| 33 | 1.9.1.4 | Drawings Approved |  | 10d | 2027-02-18 | 2027-03-03 | 32 | 20d | 0d |
| 34 | 1.9.1.5 | Manufacture [12 weeks?] |  | 60d | 2027-03-04 | 2027-06-02 | 33 | 20d | 0d |
| 35 | 1.9.1.6 | Delivery to Site | milestone | 0d | 2027-06-02 | 2027-06-02 | 34 | 20d |  |
| 36 | 1.9.2 | **Fume Cupboards (New? TBC)** |  | 120d | 2026-12-01 | 2027-06-02 |  | 20d |  |
| 37 | 1.9.2.1 | Vendor Shortlisting & T&C's |  | 20d | 2026-12-01 | 2027-01-06 | 17 | 25d | 5d |
| 38 | 1.9.2.2 | Tender & Approval to Proceed |  | 20d | 2027-01-14 | 2027-02-10 | 19, 37 | 20d | 0d |
| 39 | 1.9.2.3 | Order Placed |  | 5d | 2027-02-11 | 2027-02-17 | 38 | 20d | 0d |
| 40 | 1.9.2.4 | Drawings Approved |  | 10d | 2027-02-18 | 2027-03-03 | 39 | 20d | 0d |
| 41 | 1.9.2.5 | Manufacture [12 weeks?] |  | 60d | 2027-03-04 | 2027-06-02 | 40 | 20d | 0d |
| 42 | 1.9.2.6 | Delivery to Site | milestone | 0d | 2027-06-02 | 2027-06-02 | 41 | 20d |  |
| 43 | 1.9.3 | **Laboratory Furniture** |  | 100d | 2026-12-01 | 2027-04-30 |  | 97d |  |
| 44 | 1.9.3.1 | Vendor Shortlisting & T&C's |  | 20d | 2026-12-01 | 2027-01-06 | 17 | 102d | 5d |
| 45 | 1.9.3.2 | Tender & Approval to Proceed |  | 20d | 2027-01-14 | 2027-02-10 | 19, 44 | 97d | 0d |
| 46 | 1.9.3.3 | Order Placed |  | 5d | 2027-02-11 | 2027-02-17 | 45 | 97d | 0d |
| 47 | 1.9.3.4 | Manufacture |  | 50d | 2027-02-18 | 2027-04-30 | 46 | 97d | 0d |
| 48 | 1.9.3.5 | Delivery to Site | milestone | 0d | 2027-04-30 | 2027-04-30 | 47 | 97d |  |
| 49 | 1.9.4 | **Works Procurement (Trade Contractors)** |  | 90d | 2026-12-01 | 2027-04-16 |  | 0d |  |
| 50 | 1.9.4.1 | Subcontractor shortlist, PQQ and T&C's |  | 20d | 2026-12-01 | 2027-01-06 | 17 | 30d |  |
| 51 | 1.9.4.2 | Tendering & Approval in Principle to Proceed |  | 25d | 2027-02-18 | 2027-03-24 | 20, 50, 24 | 0d |  |
| 52 | 1.9.4.3 | Final Price and Contract based on Detailed Design |  | 15d | 2027-03-25 | 2027-04-16 | 20, 51 | 0d |  |

| ID | WBS | Task | Type | Duration | Start | Finish | Predecessors | Total slack | Free slack |
| --- | --- | --- | --- | --- | --- | --- | --- | --- | --- |
| 53 | 1.10 | **Site Establishment** |  | 5d | 2027-03-04 | 2027-03-10 |  | 25d |  |
| 54 | 1.10.1 | Site & Compound Area Set Up |  | 5d | 2027-03-04 | 2027-03-10 | 20, 21, 22 | 25d | 0d |
| 55 | 1.11 | **CONSTRUCTION** |  | 107d | 2027-04-19 | 2027-09-17 |  | 0d |  |
| 56 | 1.11.1 | Protect retained Equipment / Strip Out / MEP Divestment and Demolition Works [4 - 5 wks, demolition works at weekends] |  | 20d | 2027-04-19 | 2027-05-17 | 54, 21, 22, 25, 26, 20, 52 | 0d |  |
| 57 | 1.11.2 | Construct Walls, install new doors to Lab [2 to 3 weeks] |  | 10d | 2027-05-11 | 2027-05-24 | 56FS-5d | 0d |  |
| 58 | 1.11.3 | Construct Write Up Area [2 - 3 weeks] |  | 15d | 2027-05-25 | 2027-06-15 | 57 | 67d |  |
| 59 | 1.11.4 | 1st fix MEP [AHU Maintenance, HVAC Ductwork, BMS, Lab Gases, Electrical distribution, Active & Passive Fire Protection, Structured Cabling - 4 - 5 weeks] |  | 25d | 2027-05-25 | 2027-06-29 | 57 | 0d |  |
| 60 | 1.11.5 | Decorate Lab |  | 5d | 2027-06-30 | 2027-07-06 | 59 | 52d |  |
| 61 | 1.11.6 | Install Isolators (& possibly new FC's or recomission extg) |  | 5d | 2027-06-30 | 2027-07-06 | 59, 35, 42 | 0d |  |
| 62 | 1.11.7 | 2nd Fix MEP [2 - 3 weeks] |  | 15d | 2027-07-07 | 2027-07-27 | 61 | 0d |  |
| 63 | 1.11.8 | Install ceilings and floors and complete decoration [2 - 3 weeks] |  | 10d | 2027-07-21 | 2027-08-03 | 62FS-5d | 0d |  |
| 64 | 1.11.9 | Install Furniture & Equipment |  | 2d | 2027-08-04 | 2027-08-05 | 63 | 0d |  |
| 65 | 1.11.10 | Test & Commission HVAC, Isolators, FC's and Equipment |  | 10d | 2027-08-06 | 2027-08-19 | 64 | 0d |  |
| 66 | 1.11.11 | Pharmaceutical Clean and Handover |  | 5d | 2027-08-20 | 2027-08-26 | 65 | 0d |  |
| 67 | 1.11.12 | Programme Risk |  | 15d | 2027-08-27 | 2027-09-17 | 66 | 0d |  |
| 68 | 1.11.13 | Completion | milestone | 0d | 2027-09-17 | 2027-09-17 | 67 | 0d |  |
